# AEGIS - AI-assisted condition monitoring of a Niryo One

Schedule from MS Project XML, 2026-09-28 to 2027-04-15.

## Calendars

- Standard - Monday to Friday: Mon-Fri 08:00-12:00, 13:00-17:00; Sat-Sun off.

## Resources

| Resource |
| --- |
| Me - Reece Herbert |

## Schedule

| ID | WBS | Task | Type | Duration | Start | Finish | Predecessors | Resources |
| --- | --- | --- | --- | --- | --- | --- | --- | --- |
| 1 | 1 | **Project definition and PDD** |  | 13d | 2026-09-28 | 2026-10-14 |  |  |
| 2 | 1.1 | Review PDD guidance and confirm submission dates |  | 1d | 2026-09-28 | 2026-09-28 |  | Me - Reece Herbert [25%] |
| 3 | 1.2 | Define rationale, benefits and intended users |  | 1d | 2026-09-29 | 2026-09-29 | 2 | Me - Reece Herbert [25%] |
| 4 | 1.3 | Define primary aims, scope and deliverables |  | 2d | 2026-09-30 | 2026-10-01 | 3 | Me - Reece Herbert [25%] |
| 5 | 1.4 | Define secondary aims and measurable success criteria |  | 2d | 2026-10-02 | 2026-10-05 | 4 | Me - Reece Herbert [25%] |
| 6 | 1.5 | Plan methodology, experiments and evaluation |  | 2d | 2026-10-06 | 2026-10-07 | 5 | Me - Reece Herbert [25%] |
| 7 | 1.6 | Assess risks, constraints, ethics and legal issues |  | 1d | 2026-10-08 | 2026-10-08 | 6 | Me - Reece Herbert [25%] |
| 8 | 1.7 | Estimate costs, resources and commercial context |  | 1d | 2026-10-09 | 2026-10-09 | 7 | Me - Reece Herbert [25%] |
| 9 | 1.8 | Draft PDD and review Gantt with supervisor |  | 3d | 2026-10-12 | 2026-10-14 | 8 | Me - Reece Herbert [25%] |
| 10 | 1.9 | PDD ready for submission - placeholder milestone | milestone | 0d | 2026-10-15 | 2026-10-15 | 9 |  |
| 11 | 2 | **Research** |  | 11d | 2026-10-15 | 2026-10-29 |  |  |
| 12 | 2.1 | Review condition monitoring and anomaly detection literature |  | 4d | 2026-10-15 | 2026-10-20 | 10 | Me - Reece Herbert [25%] |
| 13 | 2.2 | Investigate Niryo One ROS1 telemetry and connectivity |  | 3d | 2026-10-21 | 2026-10-23 | 12 | Me - Reece Herbert [25%] |
| 14 | 2.3 | Research sensors, sampling and data quality |  | 2d | 2026-10-26 | 2026-10-27 | 13 | Me - Reece Herbert [25%] |
| 15 | 2.4 | Compare architecture and detection methods |  | 2d | 2026-10-28 | 2026-10-29 | 14 | Me - Reece Herbert [25%] |
| 16 | 2.5 | Research findings and feasibility reviewed | milestone | 0d | 2026-10-30 | 2026-10-30 | 15 |  |
| 17 | 3 | **Design** |  | 9d | 2026-10-30 | 2026-11-11 |  |  |
| 18 | 3.1 | Define system architecture and data flow |  | 3d | 2026-10-30 | 2026-11-03 | 16 | Me - Reece Herbert [25%] |
| 19 | 3.2 | Design database schema and logging contract |  | 2d | 2026-11-04 | 2026-11-05 | 18 | Me - Reece Herbert [25%] |
| 20 | 3.3 | Design dashboard and digital monitoring view |  | 2d | 2026-11-06 | 2026-11-09 | 19 | Me - Reece Herbert [25%] |
| 21 | 3.4 | Design experiments and test acceptance criteria |  | 2d | 2026-11-10 | 2026-11-11 | 20 | Me - Reece Herbert [25%] |
| 22 | 3.5 | Design review and scope approval | milestone | 0d | 2026-11-12 | 2026-11-12 | 21 |  |
| 23 | 4 | **Buying hardware** |  | 14d | 2026-11-12 | 2026-12-01 |  |  |
| 24 | 4.1 | Confirm bill of materials, compatibility and budget |  | 2d | 2026-11-12 | 2026-11-13 | 22 | Me - Reece Herbert [25%] |
| 25 | 4.2 | Obtain purchasing approval and place orders |  | 1d | 2026-11-16 | 2026-11-16 | 24 | Me - Reece Herbert [25%] |
| 26 | 4.3 | Supplier delivery lead time |  | 10d | 2026-11-17 | 2026-11-30 | 25 |  |
| 27 | 4.4 | Inspect received hardware and check connections |  | 1d | 2026-12-01 | 2026-12-01 | 26 | Me - Reece Herbert [25%] |

Notes:
- 1: EDITABLE TEMPLATE. Example start: 28 September 2026. Dates are not university deadlines. Standard 8-hour weekday calendar, no holidays entered. Me is assigned at 25% (about 2 project hours per working day); durations are working-day windows. All completion values are placeholders (0%), including existing work. Add term breaks, availability and official deadlines before baselining. Review the interim-review position. Maintain references, lab notes, backups and risk updates throughout. Automatic robot stop/slow is optional and excluded from the core schedule. XML structure and links validated; desktop import has not been tested here.
- 2: Confirm actual PDD, interim review, final report and demonstration deadlines with supervisor; all dates here are examples.
- 3: Explain why AI-assisted robotic-arm condition monitoring is worthwhile.
- 4: Niryo One telemetry, SQLite logging, anomaly detection and monitoring interface. Keep automatic safety response optional.
- 5: Agree measurable data completeness, repeatability, false-alarm rate and detection performance targets before experiments.
- 6: Simulation first, then real-arm baseline collection; compare a simple threshold baseline with anomaly detection.
- 7: Include robot access, compatibility, data loss, procurement delays, safe experiments, data handling and software licences.
- 8: Itemised hardware budget, existing equipment, potential users and competing approaches; no costs assumed.
- 9: The supplied guidance says the PDD is standalone and does not require a significant literature review.
- 10: Replace with the official deadline; this is a planned readiness milestone.
- 12: Maintain references and justify methods; refresh literature at later review checkpoints.
- 13: Confirm available joint states, temperature/current fields and error/status topics. Do not assume all measurements are available.
- 14: Compare vibration, temperature and current sensing; distinguish measured data from estimates.
- 15: Python, MQTT, Node-RED and SQLite; review simple baselines and suitable unsupervised methods.
- 16: Record decisions and unresolved risks.
- 18: Niryo One / optional sensors -> Python collection -> SQLite; MQTT and Node-RED added during integration.
- 19: Runs, timestamped telemetry, units, source identifiers, errors, stops and run metadata.
- 20: Robot state, joint telemetry, motor health where available, anomaly score, history and database status.
- 21: Define repeatable motions, train/test split by run, thresholds, baselines and safe fault surrogates.
- 22: Freeze minimum deliverables; retain optional items in a backlog.
- 24: Only purchase sensors and interfaces required by the approved design; Arduino/ESP32 choice remains editable.
- 25: Placeholder planning task; no purchase has been made.
- 26: Waiting time; no work resource assigned. Replace with supplier estimate.
- 27: Verify correct components, voltage compatibility and safe mounting.

| ID | WBS | Task | Type | Duration | Start | Finish | Predecessors | Resources |
| --- | --- | --- | --- | --- | --- | --- | --- | --- |
| 28 | 5 | **Simulations** |  | 3d | 2026-12-02 | 2026-12-04 |  |  |
| 29 | 5.1 | Review existing PyBullet prototype and reproduce baseline |  | 3d | 2026-11-17 | 2026-11-19 | 25 | Me - Reece Herbert [25%] |
| 30 | 5.2 | Extend repeatable trajectories and telemetry logging |  | 4d | 2026-11-20 | 2026-11-25 | 29 | Me - Reece Herbert [25%] |
| 31 | 5.3 | Implement simulated fault scenarios |  | 4d | 2026-11-26 | 2026-12-01 | 30 | Me - Reece Herbert [25%] |
| 32 | 5.4 | Run simulation experiments and inspect SQLite results |  | 3d | 2026-12-02 | 2026-12-04 | 31 | Me - Reece Herbert [25%] |
| 33 | 5.5 | Simulation evidence reviewed | milestone | 0d | 2026-12-07 | 2026-12-07 | 32 |  |
| 34 | 6 | **Prototypes** |  | 13d | 2026-12-07 | 2026-12-23 |  |  |
| 35 | 6.1 | Verify Niryo One connection, telemetry and safe operation |  | 3d | 2026-12-07 | 2026-12-09 | 33, 27 | Me - Reece Herbert [25%] |
| 36 | 6.2 | Prototype real-arm telemetry capture to SQLite |  | 4d | 2026-12-10 | 2026-12-15 | 35 | Me - Reece Herbert [25%] |
| 37 | 6.3 | Run and inspect a 30-minute normal-data collection |  | 2d | 2026-12-16 | 2026-12-17 | 36 | Me - Reece Herbert [25%] |
| 38 | 6.4 | Prototype external sensor acquisition and mounting |  | 4d | 2026-12-18 | 2026-12-23 | 37 | Me - Reece Herbert [25%] |
| 39 | 6.5 | Prototype feasibility review | milestone | 0d | 2026-12-24 | 2026-12-24 | 38 |  |
| 40 | 7 | **Coding** |  | 24d | 2026-12-24 | 2027-01-26 |  |  |
| 41 | 7.1 | Harden collector, database logging and reconnect handling |  | 5d | 2026-12-24 | 2026-12-30 | 39 | Me - Reece Herbert [25%] |
| 42 | 7.2 | Implement preprocessing and sensor synchronisation |  | 4d | 2026-12-31 | 2027-01-05 | 41 | Me - Reece Herbert [25%] |
| 43 | 7.3 | Implement threshold baseline and anomaly detector |  | 6d | 2027-01-06 | 2027-01-13 | 42 | Me - Reece Herbert [25%] |
| 44 | 7.4 | Implement MQTT and Node-RED monitoring interface |  | 5d | 2027-01-14 | 2027-01-20 | 43 | Me - Reece Herbert [25%] |
| 45 | 7.5 | Integrate components and document configuration |  | 4d | 2027-01-21 | 2027-01-26 | 44 | Me - Reece Herbert [25%] |
| 46 | 7.6 | Integrated AEGIS prototype ready | milestone | 0d | 2027-01-27 | 2027-01-27 | 45 |  |
| 47 | 8 | **Interim review and research update** |  | 5d | 2027-01-27 | 2027-02-02 |  |  |
| 48 | 8.1 | Update literature, decisions and risk register |  | 2d | 2027-01-27 | 2027-01-28 | 46 | Me - Reece Herbert [25%] |
| 49 | 8.2 | Prepare interim review and demonstrate progress |  | 3d | 2027-01-29 | 2027-02-02 | 48 | Me - Reece Herbert [25%] |
| 50 | 8.3 | Interim review complete - placeholder milestone | milestone | 0d | 2027-02-03 | 2027-02-03 | 49 |  |
| 51 | 9 | **Testing** |  | 19d | 2027-02-03 | 2027-03-01 |  |  |
| 52 | 9.1 | Verify logging, database queries and dashboard behaviour |  | 3d | 2027-02-03 | 2027-02-05 | 50 | Me - Reece Herbert [25%] |
| 53 | 9.2 | Collect repeated normal-operation datasets |  | 4d | 2027-02-08 | 2027-02-11 | 52 | Me - Reece Herbert [25%] |
| 54 | 9.3 | Conduct approved anomaly and fault-surrogate experiments |  | 4d | 2027-02-12 | 2027-02-17 | 53 | Me - Reece Herbert [25%] |
| 55 | 9.4 | Evaluate detection and compare with baseline |  | 4d | 2027-02-18 | 2027-02-23 | 54 | Me - Reece Herbert [25%] |
| 56 | 9.5 | Fix defects and rerun affected tests |  | 4d | 2027-02-24 | 2027-03-01 | 55 | Me - Reece Herbert [25%] |
| 57 | 9.6 | Testing evidence complete | milestone | 0d | 2027-03-02 | 2027-03-02 | 56 |  |

Notes:
- 29: Existing simulation work is acknowledged; this task verifies and documents it rather than assuming it starts from zero.
- 30: Record positions, errors and simulated health indicators with units and run metadata.
- 31: Friction, blockage and related disturbances in simulation; simulated current/temperature must be labelled as estimates.
- 32: Verify repeatability, timestamps, labels and per-run summaries.
- 33: Document the simulation-to-real limitations.
- 35: Resolve Studio/ROS1 compatibility and inspect available topics before experiments.
- 36: Collect joint positions, reported errors/stops and communication events alongside Niryo Studio.
- 37: Check completeness, timestamps and queryability. Record missing signals explicitly.
- 38: Use approved hardware; bench-test before attaching to the robot.
- 39: Confirm physical-arm access; document any fallback and scope changes with supervisor.
- 41: Handle disconnects, timestamp consistency and duplicate/missing samples.
- 42: Preserve raw data; align sources and calculate documented features.
- 43: Fit preprocessing and models only on training runs; retain separate evaluation runs.
- 44: Show status, telemetry, anomaly outputs, history and logging health.
- 45: Create reproducible start-up instructions and versioned settings.
- 46: Minimum monitoring pipeline available for testing.
- 48: Review new evidence and explain departures from the initial plan.
- 49: Placeholder timing: move this phase to the official interim-review date.
- 50: Record supervisor feedback and actions.
- 52: Test missing data, connection loss, restarts and status reporting.
- 53: Vary permitted operating conditions and keep complete run metadata.
- 54: Use simulation for blocked joints/overload unless a safe physical protocol is specifically approved; do not deliberately damage the arm.
- 55: Use held-out runs; report false alarms, detection delay and precision/recall where reliable labels exist.
- 56: Maintain a defect log and repeat the relevant checks.
- 57: Archive datasets, results and known limitations.

| ID | WBS | Task | Type | Duration | Start | Finish | Predecessors | Resources |
| --- | --- | --- | --- | --- | --- | --- | --- | --- |
| 58 | 10 | **Evaluation and contingency** |  | 9d | 2027-03-02 | 2027-03-12 |  |  |
| 59 | 10.1 | Evaluate aims, costs, limitations and practical value |  | 3d | 2027-03-02 | 2027-03-04 | 57 | Me - Reece Herbert [25%] |
| 60 | 10.2 | Contingency for access, hardware or integration delays |  | 5d | 2027-03-05 | 2027-03-11 | 59 | Me - Reece Herbert [25%] |
| 61 | 10.3 | Final technical review |  | 1d | 2027-03-12 | 2027-03-12 | 60 | Me - Reece Herbert [25%] |
| 62 | 11 | **Report writing and submission** |  | 18d | 2027-03-15 | 2027-04-07 |  |  |
| 63 | 11.1 | Consolidate ongoing research and implementation notes |  | 3d | 2027-03-15 | 2027-03-17 | 61 | Me - Reece Herbert [25%] |
| 64 | 11.2 | Write methodology, design and implementation chapters |  | 5d | 2027-03-18 | 2027-03-24 | 63 | Me - Reece Herbert [25%] |
| 65 | 11.3 | Write results, discussion, conclusions and reflection |  | 5d | 2027-03-25 | 2027-03-31 | 64 | Me - Reece Herbert [25%] |
| 66 | 11.4 | Review references, figures, appendices and formatting |  | 2d | 2027-04-01 | 2027-04-02 | 65 | Me - Reece Herbert [25%] |
| 67 | 11.5 | Supervisor feedback and final revisions |  | 3d | 2027-04-05 | 2027-04-07 | 66 | Me - Reece Herbert [25%] |
| 68 | 11.6 | Final report ready - placeholder milestone | milestone | 0d | 2027-04-08 | 2027-04-08 | 67 |  |
| 69 | 12 | **Demonstration and handover** |  | 5d | 2027-04-08 | 2027-04-14 |  |  |
| 70 | 12.1 | Prepare demonstration, presentation and backup recording |  | 3d | 2027-04-08 | 2027-04-12 | 68 | Me - Reece Herbert [25%] |
| 71 | 12.2 | Archive code, datasets, instructions and final evidence |  | 2d | 2027-04-13 | 2027-04-14 | 70 | Me - Reece Herbert [25%] |
| 72 | 12.3 | Project complete - placeholder milestone | milestone | 0d | 2027-04-15 | 2027-04-15 | 71 |  |

Notes:
- 59: Assess success against the criteria agreed in the PDD; distinguish simulated from real-world evidence.
- 60: Explicit schedule reserve; reduce or move only after reviewing risks.
- 61: Confirm evidence supports the conclusions and remaining issues are documented.
- 63: Keep notes throughout earlier tasks; this phase consolidates them.
- 64: Explain justified technical choices and reproducibility.
- 65: Compare outcomes to aims and explain changes from the PDD.
- 66: Check attribution, captions, units and submission requirements.
- 67: Allow for supervisor availability; agree review arrangements.
- 68: Replace with the official submission deadline.
- 70: Show telemetry capture, anomaly output and stored evidence.
- 71: Verify restore/reproduction instructions; preserve raw datasets.
- 72: Confirm official assessment and handover requirements.
